Schedule from MS Project, 2023-09-14 to 2023-11-22, costs in $.

## Calendars

- Estándar: Mon-Fri 09:00-13:00, 15:00-19:00; Sat-Sun off. Exceptions (off unless hours are given): 2023-10-16 (Dia de la Diversidad Cultural).

## Resources

| Resource | Rate | Cost per use |
| --- | --- | --- |
| Computadoras |  | 1020000 |
| Materiales electricos |  | 40000 |
| Materiales de limpieza |  | 6000 |
| Ingeniero de Sistemas |  | 787162 |
| Electricista |  | 12000 |
| Tecnico informatico | 6993 |  |
| Programador Junior | 16840 |  |
| Programador Senior | 18841 |  |
| Diseñador de Interfaces | 11378 |  |
| Ingeniero de pruebas | 13834 |  |
| Analista en sistemas | 15173 |  |
| Administrador de BD | 15173 |  |
| Servicio de limpieza | 1300 |  |
| Capacitador | 7298 |  |

## Schedule

| ID | WBS | Task | Type | Duration | Start | Finish | Predecessors | Total slack | Free slack | Constraint | Resources | Work | Cost |
| --- | --- | --- | --- | --- | --- | --- | --- | --- | --- | --- | --- | --- | --- |
| 1 | 1 | **Sistema de gestion de turnos y pacientes para la SAP** |  | 48.75d | 2023-09-14 | 2023-11-22 |  | 0d |  |  | Ingeniero de Sistemas | 1204h | 8,512,366 |
| 2 | 1.1 | **Investigación preliminar** |  | 19d | 2023-09-14 | 2023-10-10 |  | 1.75d |  |  | Electricista | 296h | 1,484,816 |
| 3 | 1.1.1 | Verificar el estado de las instalaciones electricas. |  | 0.5d | 2023-09-14 | 2023-09-14 |  | 36.75d | 0d |  |  |  |  |
| 4 | 1.1.2 | Investigar recursos para el reacondicionamiento electrico del sitio. |  | 2d | 2023-09-14 | 2023-09-18 | 3 | 36.75d |  |  |  |  |  |
| 5 | 1.1.3 | Realizar entrevista al jefe |  | 0.25d | 2023-09-14 | 2023-09-14 |  | 1.75d | 0.75d |  | Analista en sistemas | 2h | 30,346 |
| 6 | 1.1.4 | Realizar entrevista a las recepcionistas |  | 0.25d | 2023-09-14 | 2023-09-14 |  | 1.75d | 0.75d |  | Analista en sistemas | 2h | 30,346 |
| 7 | 1.1.5 | Elaborar Especificación de Requisitos de Usuario (ERS) |  | 3d | 2023-09-15 | 2023-09-19 | 5, 6 | 1d | 0d | start no earlier than 2023-09-15 | Analista en sistemas | 24h | 364,152 |
| 8 | 1.1.6 | Verificar el estado de los equipos actuales (computadoras). |  | 0.5d | 2023-09-20 | 2023-09-20 | 7 | 26.75d | 0d |  | Tecnico informatico | 4h | 27,972 |
| 9 | 1.1.7 | Realizar pedido de computadoras nuevas a la Subsecretaría de Salud. |  | 0.5d | 2023-09-20 | 2023-09-20 | 8 | 26.75d | 0d |  |  |  |  |
| 10 | 1.1.8 | Recibir pedido de computadoras. |  | 14d | 2023-09-21 | 2023-10-10 | 9 | 26.75d | 0d |  | Computadoras | 112h | 1,020,000 |
| 11 | 1.1.9 | Investigación preliminar realizada. | milestone | 0d | 2023-10-10 | 2023-10-10 | 10 | 26.75d |  |  |  |  |  |
| 12 | 1.2 | **Desarrollo** |  | 44.75d | 2023-09-20 | 2023-11-22 |  | 0d |  |  |  | 518h | 6,240,388 |
| 13 | 1.2.1 | **Base de datos** |  | 13.25d | 2023-09-20 | 2023-10-09 |  | 1d |  |  |  | 80h | 1,240,512 |
| 14 | 1.2.1.1 | Recopilar informacion de las planillas de Excel |  | 1d | 2023-09-20 | 2023-09-20 | 7 | 41d | 8d |  | Programador Junior | 8h | 134,720 |
| 15 | 1.2.1.2 | Realizar el modelo entidad relación de la base de datos para turnos y pacientes. |  | 2d | 2023-09-21 | 2023-09-22 | 7 | 0d |  | start no earlier than 2023-09-21 | Administrador de BD | 16h | 242,768 |
| 16 | 1.2.1.3 | Realizar modelo relacional de la BD. |  | 1d | 2023-09-25 | 2023-09-25 | 15 | 0d |  |  | Administrador de BD | 8h | 121,384 |
| 17 | 1.2.1.4 | Desarrollar la base de datos. |  | 5d | 2023-09-26 | 2023-10-02 | 16 | 0d |  |  | Administrador de BD | 40h | 606,920 |
| 18 | 1.2.1.5 | Importar datos a la BD |  | 0.5d | 2023-10-06 | 2023-10-06 | 14, 17 | 32d |  |  | Programador Junior | 4h | 67,360 |
| 19 | 1.2.1.6 | Desplegar la base de datos. |  | 0.5d | 2023-10-06 | 2023-10-09 | 17 | 0d |  |  | Programador Junior | 4h | 67,360 |
| 20 | 1.2.1.7 | Base de datos desplegada. | milestone | 0d | 2023-10-09 | 2023-10-09 | 19 | 31.5d |  |  |  |  |  |
| 21 | 1.2.2 | **Interfaz de usuario** |  | 10.25d | 2023-09-20 | 2023-10-04 |  | 3d |  |  |  | 82h | 1,238,868 |
| 22 | 1.2.2.1 | Diseñar boceto de interfaz del programa que será usado por el personal de recepción. |  | 3d | 2023-09-20 | 2023-09-22 | 7 | 3d | 0d |  | Diseñador de Interfaces | 24h | 273,072 |
| 23 | 1.2.2.2 | Presentar boceto al personal de recepción. |  | 0.25d | 2023-09-25 | 2023-09-25 | 22 | 3d | 0d |  | Diseñador de Interfaces | 2h | 22,756 |
| 24 | 1.2.2.3 | Desarrollar interfaz. |  | 7d | 2023-09-25 | 2023-10-04 | 23 | 3d | 0d |  | Programador Junior | 56h | 943,040 |
| 25 | 1.2.2.4 | Interfaz de usuario realizada. | milestone | 0d | 2023-10-04 | 2023-10-04 | 24 | 3d |  |  |  |  |  |

| ID | WBS | Task | Type | Duration | Start | Finish | Predecessors | Total slack | Resources | Work | Cost |
| --- | --- | --- | --- | --- | --- | --- | --- | --- | --- | --- | --- |
| 26 | 1.2.3 | **Aplicación** |  | 15d | 2023-10-09 | 2023-10-31 |  | 0d |  | 120h | 2,260,920 |
| 27 | 1.2.3.1 | Realizar diagrama de clases. |  | 1d | 2023-10-09 | 2023-10-10 | 19, 25 | 0d | Programador Senior | 8h | 150,728 |
| 28 | 1.2.3.2 | Desarrollar el módulo de turnos de la aplicación. |  | 14d | 2023-10-10 | 2023-10-31 | 27 | 0d | Programador Senior [50%] | 56h | 1,055,096 |
| 29 | 1.2.3.3 | Desarrollar el módulo de pacientes de la aplicación. |  | 14d | 2023-10-10 | 2023-10-31 | 27 | 0d | Programador Senior [50%] | 56h | 1,055,096 |
| 30 | 1.2.3.4 | Aplicación desarrollada. | milestone | 0d | 2023-10-31 | 2023-10-31 | 29, 28 | 0d |  |  |  |
| 31 | 1.2.4 | **Integración** |  | 7d | 2023-10-31 | 2023-11-09 |  | 0d |  | 80h | 1,258,976 |
| 32 | 1.2.4.1 | Integrar capas del sistema. |  | 2d | 2023-10-31 | 2023-11-02 | 30 | 0d | Programador Senior | 16h | 301,456 |
| 33 | 1.2.4.2 | Realizar pruebas al sistema. |  | 5d | 2023-11-02 | 2023-11-09 | 32 | 0d | Ingeniero de pruebas | 40h | 553,360 |
| 34 | 1.2.4.3 | Realizar manual de usuario de la aplicación. |  | 3d | 2023-11-02 | 2023-11-07 | 32 | 2d | Programador Junior | 24h | 404,160 |
| 35 | 1.2.4.4 | Integración finalizada. | milestone | 0d | 2023-11-09 | 2023-11-09 | 34, 33 | 0d |  |  |  |
| 36 | 1.2.5 | **Despliegue** |  | 9.5d | 2023-11-09 | 2023-11-22 |  | 0d | Electricista | 156h | 241,112 |
| 37 | 1.2.5.1 | Realizar presupuesto de recursos para el reacondicionamiento eléctrico del sitio (cableado y limpieza). |  | 0.5d | 2023-11-09 | 2023-11-09 | 35, 4 | 0d |  |  |  |
| 38 | 1.2.5.2 | Reacondicionar el lugar. |  | 5d | 2023-11-09 | 2023-11-16 | 37 | 0d | Materiales electricos | 40h | 40,000 |
| 39 | 1.2.5.3 | Realizar limpieza del lugar |  | 1d | 2023-11-16 | 2023-11-17 | 38 | 0d | Materiales de limpieza; Servicio de limpieza | 16h | 16,400 |
| 40 | 1.2.5.4 | Instalar las nuevas computadoras en el área de recepción. |  | 0.75d | 2023-11-17 | 2023-11-20 | 11, 39 | 0d | Tecnico informatico | 6h | 41,958 |
| 41 | 1.2.5.5 | Instalar el sistema en las computadoras nuevas. |  | 0.25d | 2023-11-20 | 2023-11-20 | 40 | 0d | Tecnico informatico | 2h | 13,986 |
| 42 | 1.2.5.6 | Capacitar al personal de recepción. |  | 2d | 2023-11-20 | 2023-11-22 | 41 | 0d | Capacitador | 16h | 116,768 |
| 43 | 1.2.5.7 | Sistema desplegado. | milestone | 0d | 2023-11-22 | 2023-11-22 | 42 | 0d |  |  |  |
| 44 | 1.2.6 | Desarrollo finalizado. | milestone | 0d | 2023-11-22 | 2023-11-22 | 43 | 0d |  |  |  |
| 45 | 2 | Sistema de gestión implementado. | milestone | 0d | 2023-11-22 | 2023-11-22 | 44 | 0d |  |  |  |
